# RF-140 — Duplicação e Restauração — km 12+000 ao km 36+000 (exemplo fictício) — Rev. 04

Schedule from MS Project, 2026-03-02 to 2027-12-01, status date 2026-10-30, costs in R$, A marks actual dates.
Cronograma de exemplo, inteiramente fictício — cliente: Departamento Fictício de Estradas (DFE)

## Calendars

- Padrão da Obra (5 dias): Mon-Fri 08:00-12:00, 13:00-17:00; Sat-Sun off. Exceptions (off unless hours are given): 2026-04-03 (Sexta-feira Santa), 2026-04-21 (Tiradentes), 2026-05-01 (Dia do Trabalho), 2026-06-04 (Corpus Christi), 2026-09-07 (Independência do Brasil), 2026-10-12 (Nossa Senhora Aparecida), 2026-11-02 (Finados), 2026-11-20 (Consciência Negra), 2026-12-03 (Reserva de chuva), 2026-12-09 (Reserva de chuva), 2026-12-15 (Reserva de chuva), 2026-12-21 (Reserva de chuva), 2026-12-24 (Recesso de fim de ano), 2026-12-25 (Natal), 2026-12-29 (Reserva de chuva), 2026-12-31 (Recesso de fim de ano), 2027-01-01 (Confraternização Universal), 2027-01-06 (Reserva de chuva), 2027-01-12 (Reserva de chuva), 2027-01-18 (Reserva de chuva), 2027-01-22 (Reserva de chuva), 2027-01-28 (Reserva de chuva), 2027-02-02 (Reserva de chuva), 2027-02-05 (Reserva de chuva), 2027-02-08 to 2027-02-09 (Carnaval), 2027-02-15 (Reserva de chuva), 2027-02-18 (Reserva de chuva), 2027-02-24 (Reserva de chuva), 2027-03-03 (Reserva de chuva), 2027-03-09 (Reserva de chuva), 2027-03-15 (Reserva de chuva), 2027-03-22 (Reserva de chuva), 2027-03-26 (Sexta-feira Santa), 2027-03-29 (Reserva de chuva), 2027-04-21 (Tiradentes), 2027-05-27 (Corpus Christi), 2027-09-07 (Independência do Brasil), 2027-10-12 (Nossa Senhora Aparecida), 2027-11-02 (Finados), 2027-11-15 (Proclamação da República).
- Terraplenagem (6 dias): Mon-Sat 08:00-12:00, 13:00-17:00; Sun off. Exceptions (off unless hours are given): 2026-04-03 (Sexta-feira Santa), 2026-04-21 (Tiradentes), 2026-05-01 (Dia do Trabalho), 2026-06-04 (Corpus Christi), 2026-09-07 (Independência do Brasil), 2026-10-12 (Nossa Senhora Aparecida), 2026-11-02 (Finados), 2026-11-20 (Consciência Negra), 2026-12-02 (Reserva de chuva), 2026-12-05 (Reserva de chuva), 2026-12-09 (Reserva de chuva), 2026-12-14 (Reserva de chuva), 2026-12-17 (Reserva de chuva), 2026-12-22 (Reserva de chuva), 2026-12-24 (Recesso de fim de ano), 2026-12-25 (Natal), 2026-12-28 (Reserva de chuva), 2026-12-31 (Recesso de fim de ano), 2027-01-01 (Confraternização Universal), 2027-01-04 (Reserva de chuva), 2027-01-07 (Reserva de chuva), 2027-01-12 (Reserva de chuva), 2027-01-15 (Reserva de chuva), 2027-01-20 (Reserva de chuva), 2027-01-23 (Reserva de chuva), 2027-01-28 (Reserva de chuva), 2027-02-02 (Reserva de chuva), 2027-02-05 (Reserva de chuva), 2027-02-08 to 2027-02-09 (Carnaval), 2027-02-11 (Reserva de chuva), 2027-02-15 (Reserva de chuva), 2027-02-18 (Reserva de chuva), 2027-02-22 (Reserva de chuva), 2027-02-25 (Reserva de chuva), 2027-03-02 (Reserva de chuva), 2027-03-05 (Reserva de chuva), 2027-03-10 (Reserva de chuva), 2027-03-15 (Reserva de chuva), 2027-03-18 (Reserva de chuva), 2027-03-23 (Reserva de chuva), 2027-03-26 (Sexta-feira Santa), 2027-03-29 (Reserva de chuva), 2027-04-21 (Tiradentes), 2027-05-27 (Corpus Christi), 2027-09-07 (Independência do Brasil), 2027-10-12 (Nossa Senhora Aparecida), 2027-11-02 (Finados), 2027-11-15 (Proclamação da República).

## Resources

| Resource | Unit | Rate |
| --- | --- | --- |
| Equipe de mobilização e canteiro |  | 1850 |
| Equipe de topografia |  | 420 |
| Engenharia e projetos |  | 680 |
| Meio ambiente e licenciamento |  | 390 |
| Montagem industrial — usina de asfalto e britagem |  | 9800 |
| Equipe de sinalização de obras |  | 310 |
| Equipe de remanejamento de interferências |  | 1150 |
| Equipe de OAE — Estruturas Fictícias Beta Ltda. |  | 2900 |
| Equipe de içamento e montagem (guindastes) |  | 14500 |
| Equipe de eletricistas |  | 760 |
| Administração local e desmobilização |  | 1300 |
| Equipe de recuperação de áreas degradadas |  | 390 |
| Equipe de terraplenagem — desmatamento e limpeza | m² | 0.85 |
| Equipe de terraplenagem — escavação de 1ª cat. | m³ | 14.5 |
| Equipe de terraplenagem — escavação 2ª e 3ª cat. | m³ | 48 |
| Equipe de terraplenagem — aterro compactado | m³ | 9.8 |
| Regularização e compactação do subleito | m² | 2.1 |
| Hidrossemeadura | m² | 3.4 |
| Bueiro tubular de concreto | ml | 1450 |
| Concreto estrutural armado | m³ | 2650 |
| Dreno profundo longitudinal | ml | 185 |
| Sarjetas e valetas de concreto | ml | 96 |
| Meio-fio e descidas d'água | ml | 78 |
| Sub-base granular | m³ | 142 |
| Base de brita graduada simples (BGS) | m³ | 198 |
| Imprimação e pintura de ligação | m² | 6.9 |
| Usina de asfalto — CBUQ aplicado | ton | 465 |
| Fresagem de pavimento | m² | 11.5 |
| Sinalização horizontal | m² | 38 |
| Placas e pórticos de sinalização | un | 720 |
| Defensas metálicas | ml | 410 |
| Tachas refletivas | un | 21 |
| Dutos e caixas de passagem | ml | 115 |
| Postes e luminárias LED | un | 6900 |
| Estaca escavada de grande diâmetro | ml | 1380 |
| Viga pré-moldada protendida | un | 148000 |
| Muro de gabião | m³ | 520 |
| Cerca de vedação da faixa de domínio | ml | 64 |

## Schedule

| ID | WBS | Task | Type | Duration | Start | Finish | Predecessors | Complete | Remaining | Baseline start | Baseline finish | Baseline duration | Total slack | Free slack | Deadline | Calendar | Resources | Work | Actual work | Cost | Baseline cost | Actual cost | DISCIPLINA | SEGMENTO |
| --- | --- | --- | --- | --- | --- | --- | --- | --- | --- | --- | --- | --- | --- | --- | --- | --- | --- | --- | --- | --- | --- | --- | --- | --- |
| 1 | 1 | **Marcos Contratuais** |  | 416.25d | 2026-03-02 A | 2027-12-01 |  |  | 416.25d | 2026-03-02 | 2027-09-20 | 368d | -18.25d | 0d |  |  |  |  |  |  |  |  |  |  |
| 2 | 1.1 | Ordem de Serviço (OS) emitida | milestone | 0d | 2026-03-02 A | 2026-03-02 A |  | 100% |  | 2026-03-02 | 2026-03-02 | 0d |  |  | 2026-03-02 |  |  |  |  |  |  |  | MARCO | GERAL |
| 3 | 1.2 | Usina de asfalto licenciada e em operação | milestone | 0d | 2026-06-10 A | 2026-06-10 A | 17 | 100% |  | 2026-06-03 | 2026-06-03 | 0d |  |  | 2026-06-25 |  |  |  |  |  |  |  | MARCO | GERAL |
| 4 | 1.3 | Conclusão da terraplenagem — todos os segmentos | milestone | 0d | 2027-01-11 | 2027-01-11 | 118 |  |  | 2027-01-05 | 2027-01-05 | 0d | 17d | 0d | 2027-02-16 |  |  |  |  |  |  |  | MARCO | GERAL |
| 5 | 1.4 | Liberação ao tráfego — Segmento 1 — km 12+000 ao km 18+000 | milestone | 0d | 2027-05-04 | 2027-05-04 | 43, 44, 45, 49, 27 |  |  | 2027-03-16 | 2027-03-16 | 0d | -15.25d | 0d | 2027-04-09 |  |  |  |  |  |  |  | MARCO | GERAL |
| 6 | 1.5 | Liberação ao tráfego — Segmento 2 — km 18+000 ao km 24+000 | milestone | 0d | 2027-07-14 | 2027-07-14 | 75, 76, 81, 58 |  |  | 2027-05-28 | 2027-05-28 | 0d | -17.88d | 0d | 2027-06-18 |  |  |  |  |  |  |  | MARCO | GERAL |
| 7 | 1.6 | Liberação ao tráfego — Segmento 3 — km 24+000 ao km 30+000 | milestone | 0d | 2027-06-17 | 2027-06-17 | 105, 106, 107, 111 |  |  | 2027-04-26 | 2027-04-26 | 0d | -22d | 0d | 2027-05-17 |  |  |  |  |  |  |  | MARCO | GERAL |
| 8 | 1.7 | Liberação ao tráfego — Segmento 4 — km 30+000 ao km 36+000 | milestone | 0d | 2027-08-25 | 2027-08-25 | 137, 138, 142, 119 |  |  | 2027-07-02 | 2027-07-02 | 0d | -22.62d | 0d | 2027-07-23 |  |  |  |  |  |  |  | MARCO | GERAL |
| 9 | 1.8 | Conclusão do Viaduto V-01 (km 27+400) | milestone | 0d | 2027-10-01 | 2027-10-01 | 167 |  |  | 2027-07-23 | 2027-07-23 | 0d | -23.25d | 0d | 2027-08-27 |  |  |  |  |  |  |  | MARCO | GERAL |
| 10 | 1.9 | Termo de Recebimento Provisório (TRP) | milestone | 0d | 2027-12-01 | 2027-12-01 | 174 |  |  | 2027-09-20 | 2027-09-20 | 0d | -18.25d | 0d | 2027-11-03 |  |  |  |  |  |  |  | MARCO | GERAL |
| 11 | 2 | **Mobilização e Serviços Preliminares** |  | 69d | 2026-03-02 A | 2026-06-10 A |  | 100% |  | 2026-03-02 | 2026-06-03 | 65d |  |  |  |  |  | 1496h | 1496h | 4,660,720 | 4,294,400 | 4,660,720 |  |  |
| 12 | 2.1 | Mobilização de pessoal e equipamentos |  | 15d | 2026-03-02 A | 2026-03-20 A | 2 | 100% |  | 2026-03-02 | 2026-03-20 | 15d |  |  |  |  | Equipe de mobilização e canteiro | 120h | 120h | 222,000 | 222,000 | 222,000 | MOBILIZAÇÃO | GERAL |
| 13 | 2.2 | Instalação do canteiro de obras e alojamentos |  | 24d | 2026-03-02 A | 2026-04-02 A | 2 | 100% |  | 2026-03-02 | 2026-04-06 | 25d |  |  |  |  | Equipe de mobilização e canteiro | 192h | 192h | 355,200 | 370,000 | 355,200 | MOBILIZAÇÃO | GERAL |
| 14 | 2.3 | Licenças ambientais e autorização de supressão vegetal |  | 20d | 2026-03-02 A | 2026-03-27 A | 2 | 100% |  | 2026-03-02 | 2026-03-27 | 20d |  |  |  |  | Meio ambiente e licenciamento | 160h | 160h | 62,400 | 62,400 | 62,400 | MOBILIZAÇÃO | GERAL |
| 15 | 2.4 | Levantamento topográfico e locação do eixo |  | 20d | 2026-03-23 A | 2026-04-20 A | 12 | 100% |  | 2026-03-23 | 2026-04-20 | 20d |  |  |  |  | Equipe de topografia | 160h | 160h | 67,200 | 67,200 | 67,200 | MOBILIZAÇÃO | GERAL |
| 16 | 2.5 | Projeto executivo — compatibilização e liberação |  | 23d | 2026-03-02 A | 2026-04-01 A | 2 | 100% |  | 2026-03-02 | 2026-04-06 | 25d |  |  |  |  | Engenharia e projetos | 184h | 184h | 125,120 | 136,000 | 125,120 | MOBILIZAÇÃO | GERAL |
| 17 | 2.6 | Instalação da usina de asfalto e da central de britagem |  | 45d | 2026-04-06 A | 2026-06-10 A | 13 | 100% |  | 2026-04-07 | 2026-06-03 | 40d |  |  |  |  | Montagem industrial — usina de asfalto e britagem | 360h | 360h | 3,528,000 | 3,136,000 | 3,528,000 | MOBILIZAÇÃO | GERAL |
| 18 | 2.7 | Sinalização provisória de obras e desvios de tráfego |  | 10d | 2026-03-23 A | 2026-04-06 A | 12 | 100% |  | 2026-03-23 | 2026-04-06 | 10d |  |  |  |  | Equipe de sinalização de obras | 80h | 80h | 24,800 | 24,800 | 24,800 | MOBILIZAÇÃO | GERAL |
| 19 | 2.8 | Remanejamento de interferências (redes de terceiros) |  | 30d | 2026-04-02 A | 2026-05-18 A | 16 | 100% |  | 2026-04-07 | 2026-05-20 | 30d |  |  |  |  | Equipe de remanejamento de interferências | 240h | 240h | 276,000 | 276,000 | 276,000 | MOBILIZAÇÃO | GERAL |
| 20 | 3 | **Segmento 1 — km 12+000 ao km 18+000** |  | 245.25d | 2026-04-07 A | 2027-05-04 |  | 61% | 96.29d | 2026-04-07 | 2027-03-16 | 215d | -15.25d | 0d |  |  |  | 64h |  | 36,153,240 | 36,153,240 | 15,493,964 |  |  |
| 21 | 3.1 | **Terraplenagem** |  | 243.25d | 2026-04-07 A | 2027-04-30 |  | 93% | 16.24d | 2026-04-07 | 2027-03-11 | 213d | -13.25d | 0d |  |  |  |  |  | 7,290,600 | 7,290,600 | 7,086,600 |  |  |
| 22 | 3.1.1 | Desmatamento, destocamento e limpeza — Seg. 1 |  | 15d | 2026-04-07 A | 2026-04-24 A | 14, 18, 15SS | 100% |  | 2026-04-07 | 2026-04-24 | 15d |  |  |  | Terraplenagem (6 dias) | Equipe de terraplenagem — desmatamento e limpeza [180000 m²] |  |  | 153,000 | 153,000 | 153,000 | TERRAPLENAGEM | SEG 1 |
| 23 | 3.1.2 | Escavação, carga e transporte — material de 1ª categoria — Seg. 1 |  | 38d | 2026-05-19 A | 2026-07-02 A | 22, 19 | 100% |  | 2026-05-21 | 2026-07-07 | 40d |  |  |  | Terraplenagem (6 dias) | Equipe de terraplenagem — escavação de 1ª cat. [220000 m³] |  |  | 3,190,000 | 3,190,000 | 3,190,000 | TERRAPLENAGEM | SEG 1 |
| 24 | 3.1.3 | Escavação em material de 2ª e 3ª categoria — Seg. 1 |  | 25d | 2026-05-30 A | 2026-06-29 A | 23SS+10d | 100% |  | 2026-06-02 | 2026-07-01 | 25d |  |  |  | Terraplenagem (6 dias) | Equipe de terraplenagem — escavação 2ª e 3ª cat. [35000 m³] |  |  | 1,680,000 | 1,680,000 | 1,680,000 | TERRAPLENAGEM | SEG 1 |
| 25 | 3.1.4 | Aterro compactado — Seg. 1 |  | 48d | 2026-07-03 A | 2026-08-27 A | 23, 24, 29 | 100% |  | 2026-07-08 | 2026-08-27 | 44d |  |  |  | Terraplenagem (6 dias) | Equipe de terraplenagem — aterro compactado [190000 m³] |  |  | 1,862,000 | 1,862,000 | 1,862,000 | TERRAPLENAGEM | SEG 1 |
| 26 | 3.1.5 | Regularização e compactação do subleito — Seg. 1 |  | 12d | 2026-08-28 A | 2026-09-11 A | 25 | 100% |  | 2026-08-28 | 2026-09-11 | 12d |  |  |  | Terraplenagem (6 dias) | Regularização e compactação do subleito [96000 m²] |  |  | 201,600 | 201,600 | 201,600 | TERRAPLENAGEM | SEG 1 |
| 27 | 3.1.6 | Proteção vegetal de taludes (hidrossemeadura) — Seg. 1 |  | 9.88d | 2027-04-12 | 2027-04-30 | 25, 40 |  |  | 2027-02-23 | 2027-03-11 | 10d | -13.25d | 0d |  |  | Hidrossemeadura [60000 m²] |  |  | 204,000 | 204,000 |  | TERRAPLENAGEM | SEG 1 |

| ID | WBS | Task | Duration | Start | Finish | Predecessors | Complete | Remaining | Baseline start | Baseline finish | Baseline duration | Total slack | Free slack | Calendar | Resources | Work | Cost | Baseline cost | Actual cost | DISCIPLINA | SEGMENTO |
| --- | --- | --- | --- | --- | --- | --- | --- | --- | --- | --- | --- | --- | --- | --- | --- | --- | --- | --- | --- | --- | --- |
| 28 | 3.2 | **Drenagem e Obras de Arte Correntes** | 178.62d | 2026-04-27 A | 2027-01-27 |  | 80% | 35.66d | 2026-04-27 | 2026-12-22 | 162d | -17.88d | 0d |  |  |  | 3,416,000 | 3,416,000 | 2,714,000 |  |  |
| 29 | 3.2.1 | Bueiros tubulares de concreto — Seg. 1 | 24.88d | 2026-04-27 A | 2026-06-02 A | 22 | 100% |  | 2026-04-27 | 2026-06-01 | 25d |  |  |  | Bueiro tubular de concreto [480 ml] |  | 696,000 | 696,000 | 696,000 | DRENAGEM | SEG 1 |
| 30 | 3.2.2 | Drenos profundos longitudinais — Seg. 1 | 14.88d | 2026-08-31 A | 2026-09-22 A | 25 | 100% |  | 2026-08-28 | 2026-09-18 | 15d |  |  |  | Dreno profundo longitudinal [5200 ml] |  | 962,000 | 962,000 | 962,000 | DRENAGEM | SEG 1 |
| 31 | 3.2.3 | Sarjetas e valetas de proteção — Seg. 1 | 19.88d | 2026-09-22 A | 2026-10-21 A | 30 | 100% |  | 2026-09-21 | 2026-10-15 | 18d |  |  |  | Sarjetas e valetas de concreto [11000 ml] |  | 1,056,000 | 1,056,000 | 1,056,000 | DRENAGEM | SEG 1 |
| 32 | 3.2.4 | Meios-fios e descidas d'água — Seg. 1 | 14.88d | 2026-12-08 | 2027-01-27 | 31, 37 |  |  | 2026-11-26 | 2026-12-22 | 15d | -17.88d | 0d |  | Meio-fio e descidas d'água [9000 ml] |  | 702,000 | 702,000 |  | DRENAGEM | SEG 1 |
| 33 | 3.3 | **Pavimentação** | 114.38d | 2026-09-22 A | 2027-04-12 |  | 40% | 68.55d | 2026-09-21 | 2027-02-22 | 88d | -15.25d | 0d |  |  |  | 22,436,900 | 22,436,900 | 5,693,364 |  |  |
| 34 | 3.3.1 | Sub-base granular — Seg. 1 | 21.88d | 2026-09-22 A | 2026-10-23 A | 26, 30 | 100% |  | 2026-09-21 | 2026-10-15 | 18d |  |  |  | Sub-base granular [19000 m³] |  | 2,698,000 | 2,698,000 | 2,698,000 | PAVIMENTAÇÃO | SEG 1 |
| 35 | 3.3.2 | Base de brita graduada simples (BGS) — Seg. 1 | 25.75d | 2026-09-30 A | 2026-11-09 | 34SS+6d | 85% | 3.88d | 2026-09-29 | 2026-10-23 | 18d | -4.88d | 0d |  | Base de brita graduada simples (BGS) [17000 m³] |  | 3,366,000 | 3,366,000 | 2,848,164 | PAVIMENTAÇÃO | SEG 1 |
| 36 | 3.3.3 | Imprimação — Seg. 1 | 8.75d | 2026-10-29 A | 2026-11-11 | 35, 34, 3 | 21% | 6.88d | 2026-10-26 | 2026-11-03 | 6d | -17.88d | 0d |  | Imprimação e pintura de ligação [96000 m²] |  | 662,400 | 662,400 | 147,200 | PAVIMENTAÇÃO | SEG 1 |
| 37 | 3.3.4 | CBUQ — camada de ligação (binder) — Seg. 1 | 14.88d | 2026-11-11 | 2026-12-08 | 36 |  |  | 2026-11-04 | 2026-11-25 | 15d | -17.88d | 0d |  | Usina de asfalto — CBUQ aplicado [13500 ton] |  | 6,277,500 | 6,277,500 |  | PAVIMENTAÇÃO | SEG 1 |
| 38 | 3.3.5 | Fresagem e reperfilagem da pista existente — Seg. 1 | 14.88d | 2026-12-08 | 2027-01-27 | 37 |  |  | 2026-11-26 | 2026-12-22 | 15d | -17.88d | 0d |  | Fresagem de pavimento [52000 m²] |  | 598,000 | 598,000 |  | PAVIMENTAÇÃO | SEG 1 |
| 39 | 3.3.6 | CBUQ — capa de rolamento (pista nova e existente) — Seg. 1 | 17.88d | 2027-01-27 | 2027-03-19 | 38, 32 |  |  | 2026-12-23 | 2027-01-29 | 18d | -17.88d | 0d |  | Usina de asfalto — CBUQ aplicado [16000 ton] |  | 7,440,000 | 7,440,000 |  | PAVIMENTAÇÃO | SEG 1 |
| 40 | 3.3.7 | Acostamentos e acabamento de bordos — Seg. 1 | 9.88d | 2027-03-19 | 2027-04-12 | 39 |  |  | 2027-02-01 | 2027-02-22 | 10d | -15.25d | 0d |  | Usina de asfalto — CBUQ aplicado [3000 ton] |  | 1,395,000 | 1,395,000 |  | PAVIMENTAÇÃO | SEG 1 |
| 41 | 3.4 | **Sinalização e Segurança Viária** | 27.75d | 2027-03-19 | 2027-05-04 |  |  |  | 2027-02-01 | 2027-03-16 | 22d | -15.25d | 0d |  |  |  | 2,064,100 | 2,064,100 |  |  |  |
| 42 | 3.4.1 | Sinalização horizontal — Seg. 1 | 7.88d | 2027-03-19 | 2027-04-07 | 39 |  |  | 2027-02-01 | 2027-02-17 | 8d | -4.25d | 0d |  | Sinalização horizontal [4800 m²] |  | 182,400 | 182,400 |  | SINALIZAÇÃO | SEG 1 |
| 43 | 3.4.2 | Sinalização vertical e pórticos — Seg. 1 | 9.88d | 2027-03-19 | 2027-04-12 | 39, 42SS |  |  | 2027-02-01 | 2027-02-22 | 10d | -0.38d | 0d |  | Placas e pórticos de sinalização [260 un] |  | 187,200 | 187,200 |  | SINALIZAÇÃO | SEG 1 |
| 44 | 3.4.3 | Defensas metálicas e barreiras — Seg. 1 | 11.88d | 2027-04-12 | 2027-05-04 | 40 |  |  | 2027-02-23 | 2027-03-16 | 12d | -15.25d | 0d |  | Defensas metálicas [3800 ml] |  | 1,558,000 | 1,558,000 |  | SINALIZAÇÃO | SEG 1 |
| 45 | 3.4.4 | Tachas e dispositivos auxiliares — Seg. 1 | 4.88d | 2027-04-07 | 2027-04-16 | 42 |  |  | 2027-02-19 | 2027-02-26 | 5d | -4.25d | 0d |  | Tachas refletivas [6500 un] |  | 136,500 | 136,500 |  | SINALIZAÇÃO | SEG 1 |
| 46 | 3.5 | **Iluminação** | 46.75d | 2027-01-27 | 2027-04-23 |  |  |  | 2026-12-23 | 2027-03-08 | 36d | -8.38d | 0d |  |  | 64h | 945,640 | 945,640 |  |  |  |
| 47 | 3.5.1 | Dutos, caixas de passagem e bases — Seg. 1 | 11.88d | 2027-01-27 | 2027-03-02 | 32 |  |  | 2026-12-23 | 2027-01-19 | 12d | 1.62d |  |  | Dutos e caixas de passagem [2400 ml] |  | 276,000 | 276,000 |  | ILUMINAÇÃO | SEG 1 |
| 48 | 3.5.2 | Postes e luminárias LED — Seg. 1 | 9.88d | 2027-03-19 | 2027-04-12 | 47, 39 |  |  | 2027-02-01 | 2027-02-22 | 10d | -8.38d | 0d |  | Postes e luminárias LED [90 un] |  | 621,000 | 621,000 |  | ILUMINAÇÃO | SEG 1 |
| 49 | 3.5.3 | Cabeamento, quadros de comando e energização — Seg. 1 | 8d | 2027-04-12 | 2027-04-23 | 48 |  |  | 2027-02-23 | 2027-03-08 | 8d | -8.38d | 0d |  | Equipe de eletricistas | 64h | 48,640 | 48,640 |  | ILUMINAÇÃO | SEG 1 |
| 50 | 4 | **Segmento 2 — km 18+000 ao km 24+000** | 282.88d | 2026-04-25 A | 2027-07-14 |  | 41% | 165.53d | 2026-04-25 | 2027-05-28 | 250d | 95.38d |  |  |  | 64h | 41,924,000 | 41,924,000 | 9,453,675.28 |  |  |
| 51 | 4.1 | **Terraplenagem** | 280.88d | 2026-04-25 A | 2027-07-12 |  | 77% | 63.53d | 2026-04-25 | 2027-05-25 | 248d | -15.88d | 0d |  |  |  | 8,955,660 | 8,955,660 | 7,463,775.28 |  |  |
| 52 | 4.1.1 | Desmatamento, destocamento e limpeza — Seg. 2 | 15d | 2026-04-25 A | 2026-05-13 A | 22 | 100% |  | 2026-04-25 | 2026-05-13 | 15d |  |  | Terraplenagem (6 dias) | Equipe de terraplenagem — desmatamento e limpeza [198000 m²] |  | 168,300 | 168,300 | 168,300 | TERRAPLENAGEM | SEG 2 |
| 53 | 4.1.2 | Escavação, carga e transporte — material de 1ª categoria — Seg. 2 | 43d | 2026-07-03 A | 2026-08-21 A | 52, 23 | 100% |  | 2026-07-08 | 2026-08-22 | 40d |  |  | Terraplenagem (6 dias) | Equipe de terraplenagem — escavação de 1ª cat. [242000 m³] |  | 3,509,000 | 3,509,000 | 3,509,000 | TERRAPLENAGEM | SEG 2 |
| 54 | 4.1.3 | Escavação em material de 2ª e 3ª categoria — Seg. 2 | 25d | 2026-07-15 A | 2026-08-12 A | 53SS+10d | 100% |  | 2026-07-20 | 2026-08-17 | 25d |  |  | Terraplenagem (6 dias) | Equipe de terraplenagem — escavação 2ª e 3ª cat. [38500 m³] |  | 1,848,000 | 1,848,000 | 1,848,000 | TERRAPLENAGEM | SEG 2 |
| 55 | 4.1.4 | Aterro compactado — Seg. 2 | 56d | 2026-08-28 A | 2026-11-04 | 53, 54, 60, 25, 61 | 95% | 3d | 2026-08-28 | 2026-10-20 | 44d | -5d | 0d | Terraplenagem (6 dias) | Equipe de terraplenagem — aterro compactado [209000 m³] |  | 2,048,200 | 2,048,200 | 1,938,475.28 | TERRAPLENAGEM | SEG 2 |
| 56 | 4.1.5 | Regularização e compactação do subleito — Seg. 2 | 12d | 2026-11-05 | 2026-11-18 | 55 |  |  | 2026-10-21 | 2026-11-04 | 12d | 2.88d |  | Terraplenagem (6 dias) | Regularização e compactação do subleito [105600 m²] |  | 221,760 | 221,760 |  | TERRAPLENAGEM | SEG 2 |
| 57 | 4.1.6 | Contenção em gabião — talude do km 21+300 — Seg. 2 | 14.88d | 2026-11-05 | 2026-11-27 | 55 |  |  | 2026-11-05 | 2026-11-26 | 15d | 105.25d |  |  | Muro de gabião [1800 m³] |  | 936,000 | 936,000 |  | TERRAPLENAGEM | SEG 2 |
| 58 | 4.1.7 | Proteção vegetal de taludes (hidrossemeadura) — Seg. 2 | 9.88d | 2027-06-28 | 2027-07-12 | 55, 72, 57 |  |  | 2027-05-12 | 2027-05-25 | 10d | -15.88d | 0d |  | Hidrossemeadura [66000 m²] |  | 224,400 | 224,400 |  | TERRAPLENAGEM | SEG 2 |

| ID | WBS | Task | Duration | Start | Finish | Predecessors | Complete | Remaining | Baseline start | Baseline finish | Baseline duration | Total slack | Free slack | Constraint | Calendar | Resources | Work | Cost | Baseline cost | Actual cost | DISCIPLINA | SEGMENTO |
| --- | --- | --- | --- | --- | --- | --- | --- | --- | --- | --- | --- | --- | --- | --- | --- | --- | --- | --- | --- | --- | --- | --- |
| 59 | 4.2 | **Drenagem e Obras de Arte Correntes** | 213.25d | 2026-06-08 A | 2027-05-17 |  | 47% | 113.63d | 2026-06-02 | 2027-03-31 | 185d | -17.88d | 0d |  |  |  |  | 4,981,900 | 4,981,900 | 1,989,900 |  |  |
| 60 | 4.2.1 | Bueiros tubulares de concreto — Seg. 2 | 21.88d | 2026-06-08 A | 2026-07-07 A | 52, 29 | 100% |  | 2026-06-02 | 2026-07-07 | 25d |  |  |  |  | Bueiro tubular de concreto [528 ml] |  | 765,600 | 765,600 | 765,600 | DRENAGEM | SEG 2 |
| 61 | 4.2.2 | Bueiro celular de concreto — Seg. 2 | 19.88d | 2026-07-08 A | 2026-08-04 A | 60 | 100% |  | 2026-07-08 | 2026-08-04 | 20d |  |  |  |  | Concreto estrutural armado [462 m³] |  | 1,224,300 | 1,224,300 | 1,224,300 | DRENAGEM | SEG 2 |
| 62 | 4.2.3 | Drenos profundos longitudinais — Seg. 2 | 14.88d | 2026-11-05 | 2026-11-27 | 55 |  |  | 2026-10-21 | 2026-11-11 | 15d | -4d | 0d |  |  | Dreno profundo longitudinal [5720 ml] |  | 1,058,200 | 1,058,200 |  | DRENAGEM | SEG 2 |
| 63 | 4.2.4 | Sarjetas e valetas de proteção — Seg. 2 | 17.88d | 2026-12-28 | 2027-02-19 | 62 |  |  | 2026-11-12 | 2026-12-10 | 18d | 16.62d |  | start no earlier than 2026-12-28 |  | Sarjetas e valetas de concreto [12100 ml] |  | 1,161,600 | 1,161,600 |  | DRENAGEM | SEG 2 |
| 64 | 4.2.5 | Meios-fios e descidas d'água — Seg. 2 | 14.88d | 2027-04-20 | 2027-05-17 | 63, 69 |  |  | 2027-03-04 | 2027-03-31 | 15d | -17.88d | 0d |  |  | Meio-fio e descidas d'água [9900 ml] |  | 772,200 | 772,200 |  | DRENAGEM | SEG 2 |
| 65 | 4.3 | **Pavimentação** | 121.12d | 2026-11-27 | 2027-06-25 |  |  |  | 2026-11-12 | 2027-05-11 | 100d | -17.88d | 0d |  |  |  |  | 24,680,590 | 24,680,590 |  |  |  |
| 66 | 4.3.1 | Sub-base granular — Seg. 2 | 17.88d | 2026-11-27 | 2027-01-21 | 56, 62, 35 |  |  | 2026-11-12 | 2026-12-10 | 18d | -4d | 0d |  |  | Sub-base granular [20900 m³] |  | 2,967,800 | 2,967,800 |  | PAVIMENTAÇÃO | SEG 2 |
| 67 | 4.3.2 | Base de brita graduada simples (BGS) — Seg. 2 | 17.88d | 2026-12-08 | 2027-02-04 | 66SS+6d |  |  | 2026-11-23 | 2026-12-22 | 18d | -4d | 0d |  |  | Base de brita graduada simples (BGS) [18700 m³] |  | 3,702,600 | 3,702,600 |  | PAVIMENTAÇÃO | SEG 2 |
| 68 | 4.3.3 | Imprimação — Seg. 2 | 5.88d | 2027-02-04 | 2027-02-23 | 67, 66 |  |  | 2026-12-23 | 2027-01-07 | 6d | -4d | 0d |  |  | Imprimação e pintura de ligação [105600 m²] |  | 728,640 | 728,640 |  | PAVIMENTAÇÃO | SEG 2 |
| 69 | 4.3.4 | CBUQ — camada de ligação (binder) — Seg. 2 | 14.88d | 2027-03-19 | 2027-04-20 | 68, 39 |  |  | 2027-02-01 | 2027-03-02 | 15d | -17.88d | 0d |  |  | Usina de asfalto — CBUQ aplicado [14850 ton] |  | 6,905,250 | 6,905,250 |  | PAVIMENTAÇÃO | SEG 2 |
| 70 | 4.3.5 | Fresagem e reperfilagem da pista existente — Seg. 2 | 14.88d | 2027-04-20 | 2027-05-17 | 69 |  |  | 2027-03-04 | 2027-03-31 | 15d | -17.88d | 0d |  |  | Fresagem de pavimento [57200 m²] |  | 657,800 | 657,800 |  | PAVIMENTAÇÃO | SEG 2 |
| 71 | 4.3.6 | CBUQ — capa de rolamento (pista nova e existente) — Seg. 2 | 17.88d | 2027-05-17 | 2027-06-14 | 70, 64 |  |  | 2027-04-01 | 2027-04-27 | 18d | -17.88d | 0d |  |  | Usina de asfalto — CBUQ aplicado [17600 ton] |  | 8,184,000 | 8,184,000 |  | PAVIMENTAÇÃO | SEG 2 |
| 72 | 4.3.7 | Acostamentos e acabamento de bordos — Seg. 2 | 9.88d | 2027-06-14 | 2027-06-25 | 71 |  |  | 2027-04-28 | 2027-05-11 | 10d | -17.88d | 0d |  |  | Usina de asfalto — CBUQ aplicado [3300 ton] |  | 1,534,500 | 1,534,500 |  | PAVIMENTAÇÃO | SEG 2 |
| 73 | 4.4 | **Sinalização e Segurança Viária** | 22.75d | 2027-06-14 | 2027-07-14 |  |  |  | 2027-04-28 | 2027-05-28 | 22d | -8d | 0d |  |  |  |  | 2,270,510 | 2,270,510 |  |  |  |
| 74 | 4.4.1 | Sinalização horizontal — Seg. 2 | 7.88d | 2027-06-14 | 2027-06-23 | 71 |  |  | 2027-04-28 | 2027-05-07 | 8d | -5d | 0d |  |  | Sinalização horizontal [5280 m²] |  | 200,640 | 200,640 |  | SINALIZAÇÃO | SEG 2 |
| 75 | 4.4.2 | Sinalização vertical e pórticos — Seg. 2 | 9.88d | 2027-06-14 | 2027-06-25 | 71, 74SS |  |  | 2027-04-28 | 2027-05-11 | 10d | -5d | 0d |  |  | Placas e pórticos de sinalização [286 un] |  | 205,920 | 205,920 |  | SINALIZAÇÃO | SEG 2 |
| 76 | 4.4.3 | Defensas metálicas e barreiras — Seg. 2 | 11.88d | 2027-06-28 | 2027-07-14 | 72 |  |  | 2027-05-12 | 2027-05-28 | 12d | -17.88d | 0d |  |  | Defensas metálicas [4180 ml] |  | 1,713,800 | 1,713,800 |  | SINALIZAÇÃO | SEG 2 |
| 77 | 4.4.4 | Tachas e dispositivos auxiliares — Seg. 2 | 4.88d | 2027-06-24 | 2027-06-30 | 74 |  |  | 2027-05-10 | 2027-05-14 | 5d | 105.38d |  |  |  | Tachas refletivas [7150 un] |  | 150,150 | 150,150 |  | SINALIZAÇÃO | SEG 2 |
| 78 | 4.5 | **Iluminação** | 36.75d | 2027-05-17 | 2027-07-07 |  |  |  | 2027-04-01 | 2027-05-21 | 36d | -13d | 0d |  |  |  | 64h | 1,035,340 | 1,035,340 |  |  |  |
| 79 | 4.5.1 | Dutos, caixas de passagem e bases — Seg. 2 | 11.88d | 2027-05-17 | 2027-06-04 | 64 |  |  | 2027-04-01 | 2027-04-16 | 12d | -7d | 0d |  |  | Dutos e caixas de passagem [2640 ml] |  | 303,600 | 303,600 |  | ILUMINAÇÃO | SEG 2 |
| 80 | 4.5.2 | Postes e luminárias LED — Seg. 2 | 9.88d | 2027-06-14 | 2027-06-25 | 79, 71 |  |  | 2027-04-28 | 2027-05-11 | 10d | -13d | 0d |  |  | Postes e luminárias LED [99 un] |  | 683,100 | 683,100 |  | ILUMINAÇÃO | SEG 2 |
| 81 | 4.5.3 | Cabeamento, quadros de comando e energização — Seg. 2 | 8d | 2027-06-28 | 2027-07-07 | 80 |  |  | 2027-05-12 | 2027-05-21 | 8d | -13d | 0d |  |  | Equipe de eletricistas | 64h | 48,640 | 48,640 |  | ILUMINAÇÃO | SEG 2 |
| 82 | 5 | **Segmento 3 — km 24+000 ao km 30+000** | 252d | 2026-05-14 A | 2027-06-17 |  | 46% | 136.23d | 2026-05-14 | 2027-04-26 | 215d | 114.25d |  |  |  |  | 64h | 33,266,688 | 33,266,688 | 7,723,786 |  |  |
| 83 | 5.1 | **Terraplenagem** | 250d | 2026-05-14 A | 2027-06-15 |  | 94% | 16.15d | 2026-05-14 | 2027-04-22 | 213d | 116.25d |  |  |  |  |  | 6,707,352 | 6,707,352 | 6,519,672 |  |  |
| 84 | 5.1.1 | Desmatamento, destocamento e limpeza — Seg. 3 | 15d | 2026-05-14 A | 2026-05-30 A | 52 | 100% |  | 2026-05-14 | 2026-05-30 | 15d |  |  |  | Terraplenagem (6 dias) | Equipe de terraplenagem — desmatamento e limpeza [165600 m²] |  | 140,760 | 140,760 | 140,760 | TERRAPLENAGEM | SEG 3 |
| 85 | 5.1.2 | Escavação, carga e transporte — material de 1ª categoria — Seg. 3 | 39d | 2026-06-01 A | 2026-07-16 A | 84, 19 | 100% |  | 2026-06-01 | 2026-07-17 | 40d |  |  |  | Terraplenagem (6 dias) | Equipe de terraplenagem — escavação de 1ª cat. [202400 m³] |  | 2,934,800 | 2,934,800 | 2,934,800 | TERRAPLENAGEM | SEG 3 |
| 86 | 5.1.3 | Escavação em material de 2ª e 3ª categoria — Seg. 3 | 25d | 2026-06-13 A | 2026-07-11 A | 85SS+10d | 100% |  | 2026-06-13 | 2026-07-11 | 25d |  |  |  | Terraplenagem (6 dias) | Equipe de terraplenagem — escavação 2ª e 3ª cat. [32200 m³] |  | 1,545,600 | 1,545,600 | 1,545,600 | TERRAPLENAGEM | SEG 3 |
| 87 | 5.1.4 | Aterro compactado — Seg. 3 | 50d | 2026-08-12 A | 2026-10-09 A | 85, 86, 91 | 100% |  | 2026-08-12 | 2026-10-02 | 44d |  |  |  | Terraplenagem (6 dias) | Equipe de terraplenagem — aterro compactado [174800 m³] |  | 1,713,040 | 1,713,040 | 1,713,040 | TERRAPLENAGEM | SEG 3 |
| 88 | 5.1.5 | Regularização e compactação do subleito — Seg. 3 | 14d | 2026-10-10 A | 2026-10-27 A | 87 | 100% |  | 2026-10-03 | 2026-10-17 | 12d |  |  |  | Terraplenagem (6 dias) | Regularização e compactação do subleito [88320 m²] |  | 185,472 | 185,472 | 185,472 | TERRAPLENAGEM | SEG 3 |
| 89 | 5.1.6 | Proteção vegetal de taludes (hidrossemeadura) — Seg. 3 | 9.88d | 2027-06-02 | 2027-06-15 | 87, 102 |  |  | 2027-04-08 | 2027-04-22 | 10d | 116.25d |  |  |  | Hidrossemeadura [55200 m²] |  | 187,680 | 187,680 |  | TERRAPLENAGEM | SEG 3 |

| ID | WBS | Task | Duration | Start | Finish | Predecessors | Complete | Remaining | Baseline start | Baseline finish | Baseline duration | Total slack | Free slack | Calendar | Resources | Work | Cost | Baseline cost | Actual cost | DISCIPLINA | SEGMENTO |
| --- | --- | --- | --- | --- | --- | --- | --- | --- | --- | --- | --- | --- | --- | --- | --- | --- | --- | --- | --- | --- | --- |
| 90 | 5.2 | **Drenagem e Obras de Arte Correntes** | 169.38d | 2026-07-08 A | 2027-04-14 |  | 49% | 86.69d | 2026-07-08 | 2027-02-16 | 137d | -22.62d | 0d |  |  |  | 3,143,300 | 3,143,300 | 1,204,114 |  |  |
| 91 | 5.2.1 | Bueiros tubulares de concreto — Seg. 3 | 24.88d | 2026-07-08 A | 2026-08-11 A | 84, 60 | 100% |  | 2026-07-08 | 2026-08-11 | 25d |  |  |  | Bueiro tubular de concreto [442 ml] |  | 640,900 | 640,900 | 640,900 | DRENAGEM | SEG 3 |
| 92 | 5.2.2 | Drenos profundos longitudinais — Seg. 3 | 21.75d | 2026-10-13 A | 2026-11-12 | 87 | 64% | 7.88d | 2026-10-05 | 2026-10-26 | 15d | -22.62d | 0d |  | Dreno profundo longitudinal [4784 ml] |  | 885,040 | 885,040 | 563,214 | DRENAGEM | SEG 3 |
| 93 | 5.2.3 | Sarjetas e valetas de proteção — Seg. 3 | 17.88d | 2026-11-12 | 2026-12-17 | 92 |  |  | 2026-10-27 | 2026-11-23 | 18d | 17.12d |  |  | Sarjetas e valetas de concreto [10120 ml] |  | 971,520 | 971,520 |  | DRENAGEM | SEG 3 |
| 94 | 5.2.4 | Meios-fios e descidas d'água — Seg. 3 | 14.88d | 2027-03-11 | 2027-04-14 | 93, 99 |  |  | 2027-01-15 | 2027-02-16 | 15d | -22.62d | 0d |  | Meio-fio e descidas d'água [8280 ml] |  | 645,840 | 645,840 |  | DRENAGEM | SEG 3 |
| 95 | 5.3 | **Pavimentação** | 113.25d | 2026-11-12 | 2027-06-02 |  |  |  | 2026-10-27 | 2027-04-07 | 88d | -22.62d | 0d |  |  |  | 20,641,948 | 20,641,948 |  |  |  |
| 96 | 5.3.1 | Sub-base granular — Seg. 3 | 17.88d | 2026-11-12 | 2026-12-17 | 88, 92 |  |  | 2026-10-27 | 2026-11-23 | 18d | -22.62d | 0d |  | Sub-base granular [17480 m³] |  | 2,482,160 | 2,482,160 |  | PAVIMENTAÇÃO | SEG 3 |
| 97 | 5.3.2 | Base de brita graduada simples (BGS) — Seg. 3 | 17.88d | 2026-11-23 | 2027-01-05 | 96SS+6d |  |  | 2026-11-05 | 2026-12-01 | 18d | -22.62d | 0d |  | Base de brita graduada simples (BGS) [15640 m³] |  | 3,096,720 | 3,096,720 |  | PAVIMENTAÇÃO | SEG 3 |
| 98 | 5.3.3 | Imprimação — Seg. 3 | 5.88d | 2027-01-05 | 2027-01-25 | 97, 96 |  |  | 2026-12-02 | 2026-12-11 | 6d | -22.62d | 0d |  | Imprimação e pintura de ligação [88320 m²] |  | 609,408 | 609,408 |  | PAVIMENTAÇÃO | SEG 3 |
| 99 | 5.3.4 | CBUQ — camada de ligação (binder) — Seg. 3 | 14.88d | 2027-01-25 | 2027-03-11 | 98 |  |  | 2026-12-14 | 2027-01-14 | 15d | -22.62d | 0d |  | Usina de asfalto — CBUQ aplicado [12420 ton] |  | 5,775,300 | 5,775,300 |  | PAVIMENTAÇÃO | SEG 3 |
| 100 | 5.3.5 | Fresagem e reperfilagem da pista existente — Seg. 3 | 14.88d | 2027-03-11 | 2027-04-14 | 99 |  |  | 2027-01-15 | 2027-02-16 | 15d | -22.62d | 0d |  | Fresagem de pavimento [47840 m²] |  | 550,160 | 550,160 |  | PAVIMENTAÇÃO | SEG 3 |
| 101 | 5.3.6 | CBUQ — capa de rolamento (pista nova e existente) — Seg. 3 | 17.88d | 2027-04-14 | 2027-05-17 | 100, 94 |  |  | 2027-02-17 | 2027-03-19 | 18d | -22.62d | 0d |  | Usina de asfalto — CBUQ aplicado [14720 ton] |  | 6,844,800 | 6,844,800 |  | PAVIMENTAÇÃO | SEG 3 |
| 102 | 5.3.7 | Acostamentos e acabamento de bordos — Seg. 3 | 9.88d | 2027-05-17 | 2027-06-02 | 101 |  |  | 2027-03-23 | 2027-04-07 | 10d | -22d | 0d |  | Usina de asfalto — CBUQ aplicado [2760 ton] |  | 1,283,400 | 1,283,400 |  | PAVIMENTAÇÃO | SEG 3 |
| 103 | 5.4 | **Sinalização e Segurança Viária** | 22.75d | 2027-05-17 | 2027-06-17 |  |  |  | 2027-03-23 | 2027-04-26 | 22d | -22d | 0d |  |  |  | 1,898,828 | 1,898,828 |  |  |  |
| 104 | 5.4.1 | Sinalização horizontal — Seg. 3 | 7.88d | 2027-05-17 | 2027-05-31 | 101 |  |  | 2027-03-23 | 2027-04-05 | 8d | -13d | 0d |  | Sinalização horizontal [4416 m²] |  | 167,808 | 167,808 |  | SINALIZAÇÃO | SEG 3 |
| 105 | 5.4.2 | Sinalização vertical e pórticos — Seg. 3 | 9.88d | 2027-05-17 | 2027-06-02 | 101, 104SS |  |  | 2027-03-23 | 2027-04-07 | 10d | -10.12d | 0d |  | Placas e pórticos de sinalização [239 un] |  | 172,080 | 172,080 |  | SINALIZAÇÃO | SEG 3 |
| 106 | 5.4.3 | Defensas metálicas e barreiras — Seg. 3 | 11.88d | 2027-06-02 | 2027-06-17 | 102, 94 |  |  | 2027-04-08 | 2027-04-26 | 12d | -22d | 0d |  | Defensas metálicas [3496 ml] |  | 1,433,360 | 1,433,360 |  | SINALIZAÇÃO | SEG 3 |
| 107 | 5.4.4 | Tachas e dispositivos auxiliares — Seg. 3 | 4.88d | 2027-05-31 | 2027-06-04 | 104 |  |  | 2027-04-06 | 2027-04-12 | 5d | -13d | 0d |  | Tachas refletivas [5980 un] |  | 125,580 | 125,580 |  | SINALIZAÇÃO | SEG 3 |
| 108 | 5.5 | **Iluminação** | 40.75d | 2027-04-14 | 2027-06-14 |  |  |  | 2027-02-17 | 2027-04-19 | 36d | -18.12d | 0d |  |  | 64h | 875,260 | 875,260 |  |  |  |
| 109 | 5.5.1 | Dutos, caixas de passagem e bases — Seg. 3 | 11.88d | 2027-04-14 | 2027-05-07 | 94 |  |  | 2027-02-17 | 2027-03-10 | 12d | -12.12d | 0d |  | Dutos e caixas de passagem [2208 ml] |  | 253,920 | 253,920 |  | ILUMINAÇÃO | SEG 3 |
| 110 | 5.5.2 | Postes e luminárias LED — Seg. 3 | 9.88d | 2027-05-17 | 2027-06-02 | 109, 101 |  |  | 2027-03-23 | 2027-04-07 | 10d | -18.12d | 0d |  | Postes e luminárias LED [83 un] |  | 572,700 | 572,700 |  | ILUMINAÇÃO | SEG 3 |
| 111 | 5.5.3 | Cabeamento, quadros de comando e energização — Seg. 3 | 8d | 2027-06-02 | 2027-06-14 | 110 |  |  | 2027-04-08 | 2027-04-19 | 8d | -18.12d | 0d |  | Equipe de eletricistas | 64h | 48,640 | 48,640 |  | ILUMINAÇÃO | SEG 3 |
| 112 | 6 | **Segmento 4 — km 30+000 ao km 36+000** | 288.62d | 2026-06-01 A | 2027-08-25 |  | 33% | 192.03d | 2026-06-01 | 2027-07-02 | 251d | 65.62d |  |  |  | 64h | 39,123,670 | 39,123,670 | 7,573,507.62 |  |  |
| 113 | 6.1 | **Terraplenagem** | 286.62d | 2026-06-01 A | 2027-08-23 |  | 60% | 113.31d | 2026-06-01 | 2027-06-30 | 249d | -20.62d | 0d |  |  |  | 7,655,130 | 7,655,130 | 5,674,057.62 |  |  |
| 114 | 6.1.1 | Desmatamento, destocamento e limpeza — Seg. 4 | 15d | 2026-06-01 A | 2026-06-18 A | 84 | 100% |  | 2026-06-01 | 2026-06-18 | 15d |  |  | Terraplenagem (6 dias) | Equipe de terraplenagem — desmatamento e limpeza [189000 m²] |  | 160,650 | 160,650 | 160,650 | TERRAPLENAGEM | SEG 4 |
| 115 | 6.1.2 | Escavação, carga e transporte — material de 1ª categoria — Seg. 4 | 40d | 2026-07-17 A | 2026-09-01 A | 114, 85 | 100% |  | 2026-07-18 | 2026-09-02 | 40d |  |  | Terraplenagem (6 dias) | Equipe de terraplenagem — escavação de 1ª cat. [231000 m³] |  | 3,349,500 | 3,349,500 | 3,349,500 | TERRAPLENAGEM | SEG 4 |
| 116 | 6.1.3 | Escavação em material de 2ª e 3ª categoria — Seg. 4 | 23d | 2026-07-29 A | 2026-08-24 A | 115SS+10d | 100% |  | 2026-07-30 | 2026-08-27 | 25d |  |  | Terraplenagem (6 dias) | Equipe de terraplenagem — escavação 2ª e 3ª cat. [36750 m³] |  | 1,764,000 | 1,764,000 | 1,764,000 | TERRAPLENAGEM | SEG 4 |
| 117 | 6.1.4 | Aterro compactado — Seg. 4 | 44d | 2026-10-21 A | 2026-12-18 | 115, 116, 121, 87, 122 | 20% | 35d | 2026-10-16 | 2026-12-11 | 44d | 9.88d | 0d | Terraplenagem (6 dias) | Equipe de terraplenagem — aterro compactado [199500 m³] |  | 1,955,100 | 1,955,100 | 399,907.62 | TERRAPLENAGEM | SEG 4 |
| 118 | 6.1.5 | Regularização e compactação do subleito — Seg. 4 | 12d | 2026-12-19 | 2027-01-11 | 117 |  |  | 2026-12-12 | 2027-01-05 | 12d | 9.88d | 0d | Terraplenagem (6 dias) | Regularização e compactação do subleito [100800 m²] |  | 211,680 | 211,680 |  | TERRAPLENAGEM | SEG 4 |
| 119 | 6.1.6 | Proteção vegetal de taludes (hidrossemeadura) — Seg. 4 | 9.88d | 2027-08-09 | 2027-08-23 | 117, 133 |  |  | 2027-06-17 | 2027-06-30 | 10d | -20.62d | 0d |  | Hidrossemeadura [63000 m²] |  | 214,200 | 214,200 |  | TERRAPLENAGEM | SEG 4 |

| ID | WBS | Task | Duration | Start | Finish | Predecessors | Complete | Remaining | Baseline start | Baseline finish | Baseline duration | Total slack | Free slack | Resources | Work | Actual work | Cost | Baseline cost | Actual cost | DISCIPLINA | SEGMENTO |
| --- | --- | --- | --- | --- | --- | --- | --- | --- | --- | --- | --- | --- | --- | --- | --- | --- | --- | --- | --- | --- | --- |
| 120 | 6.2 | **Drenagem e Obras de Arte Correntes** | 197d | 2026-08-12 A | 2027-06-29 |  | 50% | 98.37d | 2026-08-12 | 2027-05-06 | 160d | -22.62d | 0d |  |  |  | 4,755,450 | 4,755,450 | 1,899,450 |  |  |
| 121 | 6.2.1 | Bueiros tubulares de concreto — Seg. 4 | 24.88d | 2026-08-12 A | 2026-09-17 A | 114, 91 | 100% |  | 2026-08-12 | 2026-09-16 | 25d |  |  | Bueiro tubular de concreto [504 ml] |  |  | 730,800 | 730,800 | 730,800 | DRENAGEM | SEG 4 |
| 122 | 6.2.2 | Bueiro celular de concreto — Seg. 4 | 22.88d | 2026-09-17 A | 2026-10-21 A | 121 | 100% |  | 2026-09-17 | 2026-10-15 | 20d |  |  | Concreto estrutural armado [441 m³] |  |  | 1,168,650 | 1,168,650 | 1,168,650 | DRENAGEM | SEG 4 |
| 123 | 6.2.3 | Drenos profundos longitudinais — Seg. 4 | 14.88d | 2026-12-22 | 2027-02-10 | 117 |  |  | 2026-12-14 | 2027-01-14 | 15d | 24.75d | 0d | Dreno profundo longitudinal [5460 ml] |  |  | 1,010,100 | 1,010,100 |  | DRENAGEM | SEG 4 |
| 124 | 6.2.4 | Sarjetas e valetas de proteção — Seg. 4 | 17.88d | 2027-02-10 | 2027-03-31 | 123 |  |  | 2027-01-15 | 2027-02-22 | 18d | 24.75d |  | Sarjetas e valetas de concreto [11550 ml] |  |  | 1,108,800 | 1,108,800 |  | DRENAGEM | SEG 4 |
| 125 | 6.2.5 | Meios-fios e descidas d'água — Seg. 4 | 14.88d | 2027-06-09 | 2027-06-29 | 124, 130 |  |  | 2027-04-15 | 2027-05-06 | 15d | -22.62d | 0d | Meio-fio e descidas d'água [9450 ml] |  |  | 737,100 | 737,100 |  | DRENAGEM | SEG 4 |
| 126 | 6.3 | **Pavimentação** | 130.75d | 2027-01-13 | 2027-08-09 |  |  |  | 2027-01-15 | 2027-06-30 | 101d | -22.62d | 0d |  |  |  | 23,558,745 | 23,558,745 |  |  |  |
| 127 | 6.3.1 | Sub-base granular — Seg. 4 | 17.88d | 2027-01-13 | 2027-03-04 | 118, 97 |  |  | 2027-01-15 | 2027-02-22 | 18d | 8.88d | 0d | Sub-base granular [19950 m³] |  |  | 2,832,900 | 2,832,900 |  | PAVIMENTAÇÃO | SEG 4 |
| 128 | 6.3.2 | Base de brita graduada simples (BGS) — Seg. 4 | 17.88d | 2027-01-25 | 2027-03-16 | 127SS+6d |  |  | 2027-01-27 | 2027-03-04 | 18d | 8.88d | 0d | Base de brita graduada simples (BGS) [17850 m³] |  |  | 3,534,300 | 3,534,300 |  | PAVIMENTAÇÃO | SEG 4 |
| 129 | 6.3.3 | Imprimação — Seg. 4 | 5.88d | 2027-03-16 | 2027-03-31 | 128, 127 |  |  | 2027-03-05 | 2027-03-16 | 6d | 8.88d |  | Imprimação e pintura de ligação [100800 m²] |  |  | 695,520 | 695,520 |  | PAVIMENTAÇÃO | SEG 4 |
| 130 | 6.3.4 | CBUQ — camada de ligação (binder) — Seg. 4 | 14.88d | 2027-05-17 | 2027-06-09 | 129, 101 |  |  | 2027-03-23 | 2027-04-14 | 15d | -22.62d | 0d | Usina de asfalto — CBUQ aplicado [14175 ton] |  |  | 6,591,375 | 6,591,375 |  | PAVIMENTAÇÃO | SEG 4 |
| 131 | 6.3.5 | Fresagem e reperfilagem da pista existente — Seg. 4 | 14.88d | 2027-06-09 | 2027-06-29 | 130 |  |  | 2027-04-15 | 2027-05-06 | 15d | -22.62d | 0d | Fresagem de pavimento [54600 m²] |  |  | 627,900 | 627,900 |  | PAVIMENTAÇÃO | SEG 4 |
| 132 | 6.3.6 | CBUQ — capa de rolamento (pista nova e existente) — Seg. 4 | 17.88d | 2027-06-30 | 2027-07-26 | 131, 125 |  |  | 2027-06-07 | 2027-06-30 | 18d | -22.62d | 0d | Usina de asfalto — CBUQ aplicado [16800 ton] |  |  | 7,812,000 | 7,812,000 |  | PAVIMENTAÇÃO | SEG 4 |
| 133 | 6.3.7 | Acostamentos e acabamento de bordos — Seg. 4 | 9.88d | 2027-07-26 | 2027-08-09 | 132 |  |  | 2027-06-03 | 2027-06-16 | 10d | -22.62d | 0d | Usina de asfalto — CBUQ aplicado [3150 ton] |  |  | 1,464,750 | 1,464,750 |  | PAVIMENTAÇÃO | SEG 4 |
| 134 | 6.4 | **Sinalização e Segurança Viária** | 21.75d | 2027-07-26 | 2027-08-25 |  |  |  | 2027-06-03 | 2027-07-02 | 22d | -13.62d | 0d |  |  |  | 2,167,305 | 2,167,305 |  |  |  |
| 135 | 6.4.1 | Sinalização horizontal — Seg. 4 | 7.88d | 2027-07-26 | 2027-08-05 | 132 |  |  | 2027-06-03 | 2027-06-14 | 8d | -13.62d | 0d | Sinalização horizontal [5040 m²] |  |  | 191,520 | 191,520 |  | SINALIZAÇÃO | SEG 4 |
| 136 | 6.4.2 | Sinalização vertical e pórticos — Seg. 4 | 9.88d | 2027-07-26 | 2027-08-09 | 132, 135SS |  |  | 2027-06-03 | 2027-06-16 | 10d | 77.5d |  | Placas e pórticos de sinalização [273 un] |  |  | 196,560 | 196,560 |  | SINALIZAÇÃO | SEG 4 |
| 137 | 6.4.3 | Defensas metálicas e barreiras — Seg. 4 | 11.88d | 2027-08-09 | 2027-08-25 | 133 |  |  | 2027-06-17 | 2027-07-02 | 12d | -22.62d | 0d | Defensas metálicas [3990 ml] |  |  | 1,635,900 | 1,635,900 |  | SINALIZAÇÃO | SEG 4 |
| 138 | 6.4.4 | Tachas e dispositivos auxiliares — Seg. 4 | 4.88d | 2027-08-05 | 2027-08-12 | 135 |  |  | 2027-06-15 | 2027-06-21 | 5d | -13.62d | 0d | Tachas refletivas [6825 un] |  |  | 143,325 | 143,325 |  | SINALIZAÇÃO | SEG 4 |
| 139 | 6.5 | **Iluminação** | 36.75d | 2027-06-30 | 2027-08-19 |  |  |  | 2027-05-07 | 2027-06-28 | 36d | -18.75d | 0d |  | 64h |  | 987,040 | 987,040 |  |  |  |
| 140 | 6.5.1 | Dutos, caixas de passagem e bases — Seg. 4 | 11.88d | 2027-06-30 | 2027-07-16 | 125 |  |  | 2027-05-07 | 2027-05-24 | 12d | -12.75d | 0d | Dutos e caixas de passagem [2520 ml] |  |  | 289,800 | 289,800 |  | ILUMINAÇÃO | SEG 4 |
| 141 | 6.5.2 | Postes e luminárias LED — Seg. 4 | 9.88d | 2027-07-26 | 2027-08-09 | 140, 132 |  |  | 2027-06-03 | 2027-06-16 | 10d | -18.75d | 0d | Postes e luminárias LED [94 un] |  |  | 648,600 | 648,600 |  | ILUMINAÇÃO | SEG 4 |
| 142 | 6.5.3 | Cabeamento, quadros de comando e energização — Seg. 4 | 8d | 2027-08-09 | 2027-08-19 | 141 |  |  | 2027-06-17 | 2027-06-28 | 8d | -18.75d | 0d | Equipe de eletricistas | 64h |  | 48,640 | 48,640 |  | ILUMINAÇÃO | SEG 4 |
| 143 | 7 | **Obras de Arte Especiais — Viaduto V-01 (km 27+400)** | 341.25d | 2026-04-22 A | 2027-10-01 |  | 32% | 232.81d | 2026-04-22 | 2027-07-23 | 293d | -23.25d | 0d |  | 936h | 352h | 20,540,600 | 19,590,840 | 5,274,320 |  |  |
| 144 | 7.1 | **Infraestrutura** | 140.88d | 2026-04-22 A | 2026-11-11 |  | 96% | 5.93d | 2026-04-22 | 2026-10-16 | 124d | 0d |  |  | 352h | 352h | 5,638,960 | 5,617,200 | 5,274,320 |  |  |
| 145 | 7.1.1 | Sondagens complementares e locação dos apoios | 10d | 2026-04-22 A | 2026-05-06 A | 15 | 100% |  | 2026-04-22 | 2026-05-06 | 10d |  |  | Equipe de topografia | 80h | 80h | 33,600 | 33,600 | 33,600 | OAE | SEG 3 |
| 146 | 7.1.2 | Projeto executivo da OAE — revisão e liberação para execução | 34d | 2026-05-07 A | 2026-06-24 A | 145, 16 | 100% |  | 2026-05-07 | 2026-06-18 | 30d |  |  | Engenharia e projetos | 272h | 272h | 184,960 | 163,200 | 184,960 | OAE | SEG 3 |
| 147 | 7.1.3 | Estacas escavadas — apoios centrais (P1 a P3) | 36.88d | 2026-06-25 A | 2026-08-14 A | 146 | 100% |  | 2026-06-19 | 2026-08-03 | 32d |  |  | Estaca escavada de grande diâmetro [1450 ml] |  |  | 2,001,000 | 2,001,000 | 2,001,000 | OAE | SEG 3 |
| 148 | 7.1.4 | Estacas escavadas — encontros (E1 e E2) | 24.88d | 2026-08-17 A | 2026-09-22 A | 147 | 100% |  | 2026-08-04 | 2026-09-04 | 24d |  |  | Estaca escavada de grande diâmetro [980 ml] |  |  | 1,352,400 | 1,352,400 | 1,352,400 | OAE | SEG 3 |
| 149 | 7.1.5 | Blocos de coroamento | 33.75d | 2026-09-22 A | 2026-11-11 | 148 | 83% | 5.88d | 2026-09-08 | 2026-10-16 | 28d | -23.25d | 0d | Concreto estrutural armado [780 m³] |  |  | 2,067,000 | 2,067,000 | 1,702,360 | OAE | SEG 3 |

| ID | WBS | Task | Duration | Start | Finish | Predecessors | Baseline start | Baseline finish | Baseline duration | Total slack | Free slack | Calendar | Resources | Work | Cost | Baseline cost | DISCIPLINA | SEGMENTO |
| --- | --- | --- | --- | --- | --- | --- | --- | --- | --- | --- | --- | --- | --- | --- | --- | --- | --- | --- |
| 150 | 7.2 | **Mesoestrutura** | 92.75d | 2026-11-11 | 2027-04-30 |  | 2026-10-19 | 2027-02-22 | 69d | -23.25d | 0d |  |  | 48h | 4,829,700 | 4,829,700 |  |  |
| 151 | 7.2.1 | Pilares | 37.88d | 2026-11-11 | 2027-02-19 | 149 | 2026-10-19 | 2026-12-16 | 38d | -23.25d | 0d |  | Concreto estrutural armado [640 m³] |  | 1,696,000 | 1,696,000 | OAE | SEG 3 |
| 152 | 7.2.2 | Travessas | 24.88d | 2027-02-19 | 2027-04-22 | 151 | 2026-12-17 | 2027-02-10 | 25d | -23.25d | 0d |  | Concreto estrutural armado [410 m³] |  | 1,086,500 | 1,086,500 | OAE | SEG 3 |
| 153 | 7.2.3 | Encontros e alas | 29.88d | 2026-11-26 | 2027-02-23 | 151SS+10d | 2026-11-03 | 2026-12-18 | 30d | 10.62d |  |  | Concreto estrutural armado [720 m³] |  | 1,908,000 | 1,908,000 | OAE | SEG 3 |
| 154 | 7.2.4 | Aparelhos de apoio | 6d | 2027-04-22 | 2027-04-30 | 152, 153 | 2027-02-11 | 2027-02-22 | 6d | -23.25d | 0d |  | Equipe de OAE — Estruturas Fictícias Beta Ltda. | 48h | 139,200 | 139,200 | OAE | SEG 3 |
| 155 | 7.3 | **Superestrutura** | 179.5d | 2026-11-11 | 2027-09-01 |  | 2026-10-19 | 2027-06-24 | 148d | -23.25d | 0d |  |  | 432h | 9,407,800 | 8,479,800 |  |  |
| 156 | 7.3.1 | Fabricação das vigas pré-moldadas protendidas | 39.88d | 2026-11-11 | 2027-02-25 | 151SS | 2026-10-19 | 2026-12-18 | 40d | 15.62d |  |  | Viga pré-moldada protendida [20 un] |  | 2,960,000 | 2,960,000 | OAE | SEG 3 |
| 157 | 7.3.2 | Lançamento das vigas pré-moldadas | 20d | 2027-04-30 | 2027-05-31 | 154, 156 | 2027-02-23 | 2027-03-16 | 12d | -23.25d | 0d |  | Equipe de içamento e montagem (guindastes) | 160h | 2,320,000 | 1,392,000 | OAE | SEG 3 |
| 158 | 7.3.3 | Pré-lajes e armação do tabuleiro | 28d | 2027-05-31 | 2027-07-08 | 157 | 2027-03-17 | 2027-04-29 | 28d | -23.25d | 0d |  | Equipe de OAE — Estruturas Fictícias Beta Ltda. | 224h | 649,600 | 649,600 | OAE | SEG 3 |
| 159 | 7.3.4 | Concretagem do tabuleiro | 17.88d | 2027-07-08 | 2027-08-03 | 158 | 2027-04-30 | 2027-05-25 | 18d | -23.25d | 0d |  | Concreto estrutural armado [890 m³] |  | 2,358,500 | 2,358,500 | OAE | SEG 3 |
| 160 | 7.3.5 | Lajes de transição | 9.88d | 2027-08-03 | 2027-08-17 | 159, 164FF+5d | 2027-05-26 | 2027-06-09 | 10d | -18.25d | 0d |  | Concreto estrutural armado [160 m³] |  | 424,000 | 424,000 | OAE | SEG 3 |
| 161 | 7.3.6 | Barreiras New Jersey e guarda-corpos | 14.88d | 2027-08-03 | 2027-08-24 | 159 | 2027-05-26 | 2027-06-16 | 15d | -23.25d | 0d |  | Concreto estrutural armado [210 m³] |  | 556,500 | 556,500 | OAE | SEG 3 |
| 162 | 7.3.7 | Juntas de dilatação | 6d | 2027-08-24 | 2027-09-01 | 161, 160 | 2027-06-17 | 2027-06-24 | 6d | -23.25d | 0d |  | Equipe de OAE — Estruturas Fictícias Beta Ltda. | 48h | 139,200 | 139,200 | OAE | SEG 3 |
| 163 | 7.4 | **Acabamentos e Acessos** | 87.62d | 2027-05-31 | 2027-10-01 |  | 2027-03-17 | 2027-07-23 | 88d | -23.25d | 0d |  |  | 104h | 664,140 | 664,140 |  |  |
| 164 | 7.4.1 | Aterros de acesso aos encontros | 25d | 2027-05-31 | 2027-06-29 | 157 | 2027-03-17 | 2027-04-19 | 25d | 13.5d |  | Terraplenagem (6 dias) | Equipe de terraplenagem — aterro compactado [42000 m³] |  | 411,600 | 411,600 | OAE | SEG 3 |
| 165 | 7.4.2 | Impermeabilização e pavimentação do tabuleiro | 7.88d | 2027-09-01 | 2027-09-14 | 162 | 2027-06-25 | 2027-07-06 | 8d | -23.25d | 0d |  | Usina de asfalto — CBUQ aplicado [380 ton] |  | 176,700 | 176,700 | OAE | SEG 3 |
| 166 | 7.4.3 | Sinalização e iluminação do viaduto | 8d | 2027-09-14 | 2027-09-24 | 165 | 2027-07-07 | 2027-07-16 | 8d | -23.25d | 0d |  | Equipe de eletricistas | 64h | 48,640 | 48,640 | OAE | SEG 3 |
| 167 | 7.4.4 | Prova de carga e inspeção final | 5d | 2027-09-24 | 2027-10-01 | 166 | 2027-07-19 | 2027-07-23 | 5d | -23.25d | 0d |  | Engenharia e projetos | 40h | 27,200 | 27,200 | OAE | SEG 3 |
| 168 | 8 | **Desmobilização e Entrega** | 208.25d | 2027-01-13 | 2027-12-01 |  | 2027-01-06 | 2027-09-20 | 163d | 0d |  |  |  | 640h | 640,000 | 640,000 |  |  |
| 169 | 8.1 | Limpeza final e recomposição das áreas de apoio | 10d | 2027-10-01 | 2027-10-18 | 5, 6, 7, 8, 9 | 2027-07-26 | 2027-08-06 | 10d | -18.25d | 0d |  | Administração local e desmobilização | 80h | 104,000 | 104,000 | DESMOBILIZAÇÃO | GERAL |
| 170 | 8.2 | Recuperação ambiental de jazidas e caminhos de serviço | 15d | 2027-01-13 | 2027-02-04 | 4 | 2027-01-06 | 2027-01-29 | 15d | 234.25d |  | Terraplenagem (6 dias) | Equipe de recuperação de áreas degradadas | 120h | 46,800 | 46,800 | DESMOBILIZAÇÃO | GERAL |
| 171 | 8.3 | Projeto as built e data book | 25d | 2027-08-03 | 2027-09-08 | 132, 159 | 2027-06-03 | 2027-07-07 | 25d | 8.5d |  |  | Engenharia e projetos | 200h | 136,000 | 136,000 | DESMOBILIZAÇÃO | GERAL |
| 172 | 8.4 | Vistoria final com a fiscalização | 5d | 2027-10-18 | 2027-10-25 | 169, 171 | 2027-08-09 | 2027-08-13 | 5d | -18.25d | 0d |  | Engenharia e projetos | 40h | 27,200 | 27,200 | DESMOBILIZAÇÃO | GERAL |
| 173 | 8.5 | Correção de pendências da vistoria | 10d | 2027-10-25 | 2027-11-09 | 172 | 2027-08-16 | 2027-08-27 | 10d | -18.25d | 0d |  | Administração local e desmobilização | 80h | 104,000 | 104,000 | DESMOBILIZAÇÃO | GERAL |
| 174 | 8.6 | Desmobilização do canteiro e da usina | 15d | 2027-11-09 | 2027-12-01 | 173 | 2027-08-30 | 2027-09-20 | 15d | -18.25d | 0d |  | Equipe de mobilização e canteiro | 120h | 222,000 | 222,000 | DESMOBILIZAÇÃO | GERAL |
